# AndroidMapper_WBS--Fixed Work_fromWeston--resourceLeveled

Schedule from MS Project, 2012-02-02 to 2012-07-20, A marks actual dates.

## Calendars

- Student Calendar: Mon-Fri 18:00-20:00; Sat-Sun off. Exceptions (off unless hours are given): 2012-02-25 12:00-19:00 (MPP), 2012-02-28 to 2012-03-06 18:00-19:00 (Midterm), 2012-03-12 to 2012-03-16 18:00-19:00 (Spring Break).
- 24 Hours: Mon-Sun 00:00-24:00.

## Resources

| Resource |
| --- |
| Developer |
| Analyst |

## Schedule

| ID | WBS | Task | Type | Duration | Start | Finish | Predecessors | Complete | Remaining | Baseline start | Baseline finish | Baseline duration | Total slack | Free slack | Constraint | Calendar | Resources | Work | Actual work | Owner |
| --- | --- | --- | --- | --- | --- | --- | --- | --- | --- | --- | --- | --- | --- | --- | --- | --- | --- | --- | --- | --- |
| 1 | 1 | **Android Mapper** |  | 17.44d | 2012-02-02 A | 2012-05-10 |  | 61% | 6.74d | 2012-02-02 | 2012-05-01 | 14.62d | 12.69d |  |  |  |  | 917.5h | 520.76h |  |
| 2 | 1.1 | **Project Mangement** |  | 17.44d | 2012-02-02 A | 2012-05-10 |  | 63% | 6.51d | 2012-02-02 | 2012-05-01 | 14.62d | 12.69d |  |  |  |  | 704h | 392.51h |  |
| 3 | 1.1.1 | Start Project | milestone | 0h | 2012-02-02 | 2012-02-02 |  |  |  | 2012-02-02 | 2012-02-02 | 0h | 30.12d |  |  |  |  |  |  |  |
| 4 | 1.1.2 | End Project | milestone | 0d | 2012-05-10 | 2012-05-10 | 42, 12, 31, 82, 11, 83, 78 |  |  | 2012-05-01 | 2012-05-01 | 0d | 12.69d |  |  |  |  |  |  |  |
| 5 | 1.1.3 | **Class Deliverables** |  | 15.5d | 2012-02-02 A | 2012-05-01 |  | 58% | 6.52d |  |  |  | 14.62d |  |  |  |  | 532h | 252.51h |  |
| 6 | 1.1.3.1 | **Statement of Work** |  | 4.12d | 2012-02-02 A | 2012-02-24 A |  | 100% |  | 2012-02-02 | 2012-02-15 | 2.5d |  |  |  |  |  | 132h | 132h |  |
| 7 | 1.1.3.1.1 | Prepare UMN SOW |  | 13h | 2012-02-16 A | 2012-02-24 A | 3, 14FF | 100% |  | 2012-02-03 | 2012-02-14 | 13h |  |  |  |  | Analyst [200%]; Developer [200%] | 52h | 52h | Ian |
| 8 | 1.1.3.1.2 | Prepare Minneapolis Skyway SOW |  | 20h | 2012-02-02 A | 2012-02-15 A | 3, 14FF | 100% |  | 2012-02-02 | 2012-02-15 | 20h |  |  |  |  | Analyst; Developer [300%] | 80h | 80h | Kristin |
| 9 | 1.1.3.2 | Prepare Master Project Plan |  | 12.5h | 2012-02-24 A | 2012-03-01 A | 15FF, 7, 8 | 100% |  | 2012-02-17 | 2012-02-28 | 12.5h |  |  |  |  | Analyst [300%]; Developer [500%] | 100h | 100h | Weston |
| 10 | 1.1.3.3 | Prepare Status Report |  | 12.5h | 2012-03-21 A | 2012-04-03 | 9, 16FF | 15% | 10.62h | 2012-03-23 | 2012-04-03 | 12.5h | 18.15d | 2.19d |  |  | Analyst [300%]; Developer [500%] | 100h | 15h | Kristin |
| 11 | 1.1.3.4 | Prepare Presentation |  | 12.5h | 2012-04-13 A | 2012-04-24 | 17FF, 10 | 6% | 11.8h | 2012-04-13 | 2012-04-24 | 12.5h | 15.88d | 3.19d |  |  | Analyst [300%]; Developer [500%] | 100h | 5.51h | Jared |
| 12 | 1.1.3.5 | Prepare Final Project Report |  | 12.5h | 2012-04-20 | 2012-05-01 | 18FF, 9 |  |  | 2012-04-20 | 2012-05-01 | 12.5h | 14.62d | 1.94d |  |  | Analyst [300%]; Developer [500%] | 100h |  | Ian |
| 13 | 1.1.3.6 | **Project Deliverable Due Dates** |  | 13.5d | 2012-02-14 | 2012-05-01 |  |  |  | 2012-02-14 | 2012-05-01 | 12.62d | 0d |  |  |  |  |  |  |  |
| 14 | 1.1.3.6.1 | Statement of Work Due | milestone, manual | 0h | 2012-02-14 | 2012-02-14 |  |  |  | 2012-02-14 | 2012-02-14 | 0h |  |  |  |  |  |  |  |  |
| 15 | 1.1.3.6.2 | Master Project Plan Due | milestone, manual | 0h | 2012-02-28 | 2012-02-28 |  |  |  | 2012-02-28 | 2012-02-28 | 0h |  |  | start no earlier than 2012-02-28 |  |  |  |  |  |
| 16 | 1.1.3.6.3 | Status Report Due | milestone, manual | 0h | 2012-04-03 | 2012-04-03 |  |  |  | 2012-04-03 | 2012-04-03 | 0h |  |  |  |  |  |  |  |  |
| 17 | 1.1.3.6.4 | Presentation Due | milestone, manual | 0h | 2012-04-24 | 2012-04-24 |  |  |  | 2012-04-24 | 2012-04-24 | 0h |  |  |  |  |  |  |  |  |
| 18 | 1.1.3.6.5 | Final Project Report Due | milestone, manual | 0h | 2012-05-01 | 2012-05-01 |  |  |  | 2012-05-01 | 2012-05-01 | 0h |  |  |  |  |  |  |  |  |
| 19 | 1.1.4 | **Team Meeting** |  | 231.25d | 2012-02-11 A | 2012-04-28 |  | 75% | 57.81d | 2012-02-11 | 2012-04-28 | 231.25d | 250.12d |  |  | 24 Hours |  | 172h | 140h |  |
| 20 | 1.1.4.1 | Team Meeting 1 |  | 2h | 2012-02-11 A | 2012-02-11 A | 3 | 100% |  | 2012-02-11 | 2012-02-11 | 2h |  |  | start no earlier than 2012-02-11 | 24 Hours |  | 16h | 16h |  |
| 21 | 1.1.4.2 | Team Meeting 2 |  | 2h | 2012-02-18 A | 2012-02-18 A | 20 | 100% |  | 2012-02-18 | 2012-02-18 | 2h |  |  | start no earlier than 2012-02-18 | 24 Hours |  | 16h | 16h |  |
| 22 | 1.1.4.3 | Team Meeting 3 |  | 2h | 2012-02-25 A | 2012-02-25 A | 21 | 100% |  | 2012-02-25 | 2012-02-25 | 2h |  |  | start no earlier than 2012-02-25 | 24 Hours |  | 16h | 16h |  |
| 23 | 1.1.4.4 | Team Meeting 4 |  | 2h | 2012-03-03 A | 2012-03-03 A | 22 | 100% |  | 2012-03-03 | 2012-03-03 | 2h |  |  | start no earlier than 2012-03-03 | 24 Hours |  | 16h | 16h |  |
| 24 | 1.1.4.5 | Team Meeting 5 |  | 2h | 2012-03-10 A | 2012-03-10 A | 23 | 100% |  | 2012-03-10 | 2012-03-10 | 2h |  |  | start no earlier than 2012-03-10 | 24 Hours |  | 16h | 16h |  |
| 25 | 1.1.4.6 | Team Meeting 6 |  | 2h | 2012-03-17 | 2012-03-17 | 24 |  |  | 2012-03-17 | 2012-03-17 | 2h | 376.12d |  | start no earlier than 2012-03-17 | 24 Hours |  |  |  |  |
| 26 | 1.1.4.7 | Team Meeting 7 |  | 2h | 2012-03-24 A | 2012-03-24 A | 25 | 100% |  | 2012-03-24 | 2012-03-24 | 2h |  |  | start no earlier than 2012-03-24 | 24 Hours |  | 20h | 20h |  |
| 27 | 1.1.4.8 | Team Meeting 8 |  | 6h | 2012-03-31 A | 2012-03-31 A | 26 | 100% |  | 2012-03-31 | 2012-03-31 | 2h |  |  | start no earlier than 2012-03-31 | 24 Hours |  | 20h | 20h |  |
| 28 | 1.1.4.9 | Team Meeting 9 |  | 2h | 2012-04-07 | 2012-04-07 | 27 |  |  | 2012-04-07 | 2012-04-07 | 2h | 313.12d |  | start no earlier than 2012-04-07 | 24 Hours |  |  |  |  |
| 29 | 1.1.4.10 | Team Meeting 10 |  | 6h | 2012-04-14 A | 2012-04-14 A | 28 | 100% |  | 2012-04-14 | 2012-04-14 | 2h |  |  | start no earlier than 2012-04-14 | 24 Hours |  | 20h | 20h |  |
| 30 | 1.1.4.11 | Team Meeting 11 |  | 2h | 2012-04-21 | 2012-04-21 | 29 |  |  | 2012-04-21 | 2012-04-21 | 2h | 270.88d | 1.25d | start no earlier than 2012-04-21 | 24 Hours |  | 16h |  |  |
| 31 | 1.1.4.12 | Team Meeting 12 |  | 2h | 2012-04-28 | 2012-04-28 | 30 |  |  | 2012-04-28 | 2012-04-28 | 2h | 250.12d | 2.19d | start no earlier than 2012-04-28 | 24 Hours |  | 16h |  |  |

| ID | WBS | Task | Type | Duration | Start | Finish | Predecessors | Complete | Remaining | Actual start | Baseline start | Baseline finish | Baseline duration | Total slack | Free slack | Resources | Work | Actual work | Owner |
| --- | --- | --- | --- | --- | --- | --- | --- | --- | --- | --- | --- | --- | --- | --- | --- | --- | --- | --- | --- |
| 32 | 1.2 | **Environment Setup** |  | 4.44d | 2012-02-27 | 2012-03-21 |  | 99% | 0d | 2012-03-01 | 2012-02-27 | 2012-03-21 | 4.44d |  |  |  | 35h | 35h |  |
| 33 | 1.2.1 | Start Environmental Set-up | milestone | 0d | 2012-03-01 | 2012-03-01 | 9 |  |  |  | 2012-02-28 | 2012-02-28 | 0d | 2.62d | 0d |  |  |  |  |
| 34 | 1.2.2 | Create GitHub respository |  | 0.5h | 2012-03-02 A | 2012-03-02 A | 33 | 100% |  |  | 2012-02-28 | 2012-02-28 | 0.5h |  |  | Developer | 0.5h | 0.5h | Weston |
| 35 | 1.2.3 | **Personal Environments** |  | 1.56d | 2012-03-01 A | 2012-03-12 |  | 99% | 0d |  | 2012-02-28 | 2012-03-16 | 2.31d | 1.06d |  |  | 34.5h | 34.5h |  |
| 36 | 1.2.3.1 | Personal Environment Set-up Started | milestone | 0h | 2012-03-01 | 2012-03-01 | 33 |  |  |  | 2012-02-28 | 2012-02-28 | 0h | 2.62d |  |  |  |  |  |
| 37 | 1.2.3.2 | Get google maps api developer key |  | 0.5h | 2012-03-12 A | 2012-03-12 A | 41 | 100% |  |  | 2012-03-16 | 2012-03-16 | 0.5h |  |  | Analyst | 0.5h | 0.5h | Sriram |
| 38 | 1.2.3.3 | Set-up Eclipse with Android SDK, and JUnit Plug-ins |  | 2h | 2012-03-01 A | 2012-03-03 A | 33 | 100% |  |  | 2012-02-28 | 2012-03-07 | 10h |  |  | Analyst [300%]; Developer [500%] | 16h | 16h | Jared |
| 39 | 1.2.3.4 | Set-up Eclipse Projects |  | 10h | 2012-03-03 A | 2012-03-12 A | 38 | 100% |  |  |  |  |  |  |  | Developer | 10h | 10h | Ian |
| 40 | 1.2.3.5 | Set-up Git |  | 8h | 2012-03-03 A | 2012-03-09 A | 38, 34 | 100% |  |  | 2012-03-08 | 2012-03-15 | 8h |  |  | Developer | 8h | 8h | Weston |
| 41 | 1.2.3.6 | Personal Environments Established | milestone | 0h | 2012-03-12 | 2012-03-12 | 40, 39 |  |  |  | 2012-03-15 | 2012-03-15 | 0h | 1.12d | 0.06d |  |  |  |  |
| 42 | 1.2.4 | End Environmental Set-up | milestone | 0h | 2012-03-12 | 2012-03-12 | 41, 37 |  |  |  | 2012-03-16 | 2012-03-16 | 0h | 1.06d | 0d |  |  |  |  |
| 43 | 1.3 | **Application** |  | 16.19d | 2012-02-02 A | 2012-05-03 |  | 69% | 4.99d |  | 2012-03-16 | 2012-04-16 | 5.19d | 8.94d |  |  | 122.5h | 84.25h |  |
| 44 | 1.3.1 | Start Application Work | milestone | 0h | 2012-03-12 | 2012-03-12 | 42 |  |  |  | 2012-03-16 | 2012-03-16 | 0h | 17.44d | 0d |  |  |  |  |
| 45 | 1.3.2 | **Framework** |  | 11.81d | 2012-02-02 A | 2012-04-10 |  | 81% | 2.2d |  | 2012-03-16 | 2012-04-04 | 3.31d | 13.31d |  |  | 92h | 74.25h |  |
| 46 | 1.3.2.1 | Show Map |  | 2h | 2012-03-13 A | 2012-03-14 A | 44 | 100% |  |  | 2012-03-16 | 2012-03-19 | 1.5h |  |  | Developer | 2h | 2h | Jon |
| 47 | 1.3.2.2 | **Locate Position** |  | 0.88d | 2012-03-13 A | 2012-03-20 |  | 94% | 0.05d |  | 2012-03-16 | 2012-03-20 | 0.38d | 17d |  |  | 8.5h | 8h |  |
| 48 | 1.3.2.2.1 | Get Position |  | 2h | 2012-03-13 A | 2012-03-14 A | 44 | 100% |  |  | 2012-03-16 | 2012-03-19 | 2h |  |  | Developer | 2h | 2h | Kristin |
| 49 | 1.3.2.2.2 | Test (Unit level) for Get Positition (iteration 1 code) |  | 5h | 2012-03-15 A | 2012-03-20 A | 48 | 100% |  |  |  |  |  |  |  | Developer [50%] | 5h | 5h | Ian |
| 50 | 1.3.2.2.3 | Show Position |  | 1h | 2012-03-15 A | 2012-03-15 A | 48, 46 | 100% |  |  | 2012-03-19 | 2012-03-20 | 1h |  |  | Developer | 1h | 1h | Ian |
| 51 | 1.3.2.2.4 | Notify User Of Inability to Position |  | 0.5h | 2012-03-15 | 2012-03-15 | 48 |  |  |  | 2012-03-19 | 2012-03-19 | 0.5h | 17.56d | 8.62d | Developer | 0.5h |  | Ian |
| 52 | 1.3.2.3 | Load Appropriate Map |  | 2h | 2012-03-22 | 2012-03-23 | 66, 68 |  |  |  | 2012-03-22 | 2012-03-22 | 2h | 16.19d | 7.25d | Developer | 2h |  | Usha |
| 53 | 1.3.2.4 | **Locate Coordinates** |  | 15h | 2012-03-15 A | 2012-03-27 |  | 37% | 9.46h |  |  |  |  | 15.75d |  |  | 17h | 6h |  |
| 54 | 1.3.2.4.1 | Locate destination |  | 1.25h | 2012-03-15 A | 2012-03-16 | 46 | 80% | 0.25h |  |  |  |  | 16.22d | 0d |  | 2h | 1h |  |
| 55 | 1.3.2.4.2 | Display destination on map |  | 15h | 2012-03-15 A | 2012-03-27 | 46, 54 | 33% | 10h |  |  |  |  | 15.75d | 0d |  | 15h | 5h |  |
| 56 | 1.3.2.5 | Route to Destination |  | 25h | 2012-03-22 A | 2012-04-10 A | 66, 68, 50 | 100% |  |  | 2012-03-22 | 2012-04-04 | 20h |  |  | Developer | 25h | 25h | Jon |
| 57 | 1.3.2.6 | Update current location |  | 2h | 2012-03-16 A | 2012-03-19 A | 50 | 100% |  |  | 2012-03-20 | 2012-03-20 | 1h |  |  | Developer | 2h | 2h | Kristin |
| 58 | 1.3.2.7 | Allow Zooming and Panning | milestone | 0h | 2012-03-14 | 2012-03-14 | 46 |  |  |  | 2012-03-19 | 2012-03-19 | 0.5h | 17.62d | 8.69d | Developer |  |  | Kristin |
| 59 | 1.3.2.8 | Manage Favorites |  | 25h | 2012-03-19 A | 2012-04-09 A | 54 | 100% |  |  | 2012-03-22 | 2012-03-27 | 8h |  |  | Developer | 25h | 25h | Usha |
| 60 | 1.3.2.9 | Save History |  | 5h | 2012-02-02 A | 2012-02-06 |  | 20% | 4h |  | 2012-03-22 | 2012-03-23 | 3h | 24.5d | 15.56d | Developer | 5h | 1h | Usha |
| 61 | 1.3.2.10 | Change Layout by Screen Orientation | milestone | 0h | 2012-03-27 | 2012-03-27 | 44, 55 |  |  |  | 2012-03-16 | 2012-03-20 | 3h | 15.75d | 6.81d | Developer |  |  | Jon |
| 62 | 1.3.2.11 | Display Help |  | 5h | 2012-03-19 A | 2012-03-21 A | 44 | 100% |  |  | 2012-03-16 | 2012-03-20 | 3h |  |  | Developer | 5h | 5h | Ian |
| 63 | 1.3.2.12 | Resume Previous State |  | 0.5h | 2012-03-13 A | 2012-03-13 | 44 | 50% | 0.25h |  | 2012-03-16 | 2012-03-16 | 0.5h | 17.81d | 8.88d | Developer | 0.5h | 0.25h | Ian |
| 64 | 1.3.2.13 | Display Keyboard | milestone | 0h | 2012-03-12 | 2012-03-12 | 44 |  |  |  | 2012-03-22 | 2012-03-22 | 0.5h | 17.88d | 8.94d | Developer |  |  | Usha |

| ID | WBS | Task | Type | Duration | Start | Finish | Predecessors | Complete | Remaining | Baseline start | Baseline finish | Baseline duration | Total slack | Free slack | Constraint | Resources | Work | Actual work | Owner |
| --- | --- | --- | --- | --- | --- | --- | --- | --- | --- | --- | --- | --- | --- | --- | --- | --- | --- | --- | --- |
| 65 | 1.3.3 | **Mpls Map** |  | 0.88d | 2012-03-19 A | 2012-03-22 A |  | 100% |  | 2012-03-19 | 2012-03-21 | 0.62d |  |  |  |  | 5h | 5h |  |
| 66 | 1.3.3.1 | Overlay Minnapolis Skyway Map |  | 5h | 2012-03-19 A | 2012-03-22 A | 46, 55 | 100% |  | 2012-03-19 | 2012-03-21 | 5h |  |  |  | Analyst | 5h | 5h | Andrey |
| 67 | 1.3.4 | **UMN Twin Cities Map** |  | 8.69d | 2012-03-15 A | 2012-05-03 |  | 19% | 7.03d | 2012-03-19 | 2012-04-13 | 4.75d | 8.94d |  |  |  | 21h | 4h |  |
| 68 | 1.3.4.1 | Overlay Campus Map |  | 5h | 2012-03-15 A | 2012-03-20 | 46 | 80% | 1h | 2012-03-19 | 2012-03-21 | 5h | 14.38d | 0d |  | Analyst | 5h | 4h | Jared |
| 69 | 1.3.4.2 | Indicate Tunnel vs. Skyway |  | 3h | 2012-03-20 | 2012-04-03 | 68 |  |  | 2012-03-22 | 2012-03-23 | 3h | 14.38d | 5.44d |  | Analyst | 3h |  | Jared |
| 70 | 1.3.4.3 | Indicate Floor Change |  | 13h | 2012-04-10 | 2012-05-03 | 56, 57 |  |  | 2012-04-05 | 2012-04-13 | 13h | 8.94d | 0d |  | Analyst | 13h |  | Jared |
| 71 | 1.3.5 | **Device Field Testing** |  | 6.12d | 2012-03-16 A | 2012-04-20 |  | 22% | 4.76d | 2012-03-22 | 2012-04-16 | 4.38d | 11.38d |  |  |  | 4.5h | 1h |  |
| 72 | 1.3.5.1 | Verify app basic functionality |  | 1h | 2012-03-16 A | 2012-03-16 A | 46, 48, 50, 51 | 100% |  | 2012-03-22 | 2012-03-22 | 1.5h |  |  |  | Analyst | 1h | 1h | Sriram |
| 73 | 1.3.5.2 | Verfiy app routing functionality |  | 1.5h | 2012-03-26 | 2012-03-27 | 72, 75 |  |  | 2012-04-05 | 2012-04-05 | 1.5h | 15.62d | 0d | finish no earlier than 2012-03-27 | Analyst | 1.5h |  | Andrey |
| 74 | 1.3.5.3 | Verify app complete functionality |  | 2h | 2012-04-19 | 2012-04-20 | 73, 76 |  |  | 2012-04-13 | 2012-04-16 | 2h | 11.38d | 0d | finish no earlier than 2012-04-20 | Analyst | 2h |  | Jared |
| 75 | 1.3.5.4 | Device Testing: Feature Set 1 | milestone | 0h | 2012-03-16 | 2012-03-16 | 72, 44 |  |  |  |  |  | 16.94d | 1.31d |  |  |  |  |  |
| 76 | 1.3.5.5 | Device Testing: Feature Set 2 | milestone | 0h | 2012-03-27 | 2012-03-27 | 75, 73 |  |  |  |  |  | 15.62d | 4.25d |  |  |  |  |  |
| 77 | 1.3.5.6 | Device Testing: Feature Set 3 | milestone | 0h | 2012-04-20 | 2012-04-20 | 76, 74 |  |  |  |  |  | 11.38d | 2.44d |  |  |  |  |  |
| 78 | 1.3.6 | End Application Work | milestone | 0h | 2012-05-03 | 2012-05-03 | 51, 52, 58, 59, 60, 61, 62, 63, 64, 69, 70, 72, 73, 74, 77 |  |  | 2012-04-16 | 2012-04-16 | 0h | 8.94d | 0d |  |  |  |  |  |
| 79 | 1.4 | **Deployment** |  | 11.75d | 2012-03-01 A | 2012-05-10 |  | 20% | 9.45d | 2012-02-28 | 2012-04-20 | 8.62d | 12.69d |  |  |  | 56h | 9h |  |
| 80 | 1.4.1 | **Ready Application For Marketplace** |  | 11.62d | 2012-03-02 | 2012-05-10 |  |  |  |  |  |  | 12.69d |  |  |  | 31h |  |  |
| 81 | 1.4.1.1 | Create Marketplace Material |  | 2h | 2012-03-02 | 2012-03-04 | 33 |  |  | 2012-02-28 | 2012-02-29 | 2h | 23.69d | 10.88d |  | Analyst | 2h |  | Andrey |
| 82 | 1.4.1.2 | Upload to Android Marketplace |  | 3h | 2012-05-08 | 2012-05-10 | 86, 81 |  |  | 2012-04-19 | 2012-04-20 | 3h | 12.81d | 0.12d |  | Developer | 3h |  | Weston |
| 83 | 1.4.1.3 | User Documentation |  | 10h | 2012-05-03 | 2012-05-10 | 78 |  |  |  |  |  | 12.69d | 0d |  | Analyst; Developer | 20h |  |  |
| 84 | 1.4.1.4 | **Package application for marketplace** |  | 0.75d | 2012-05-03 | 2012-05-08 |  |  |  | 2012-04-16 | 2012-04-19 | 0.75d | 12.81d |  |  |  | 6h |  |  |
| 85 | 1.4.1.4.1 | Get Google Maps API production keys |  | 1h | 2012-05-03 | 2012-05-04 | 78 |  |  | 2012-04-16 | 2012-04-16 | 1h | 12.81d | 0d |  | Analyst | 1h |  | Sriram |
| 86 | 1.4.1.4.2 | Sign application |  | 5h | 2012-05-04 | 2012-05-08 | 85 |  |  | 2012-04-17 | 2012-04-19 | 5h | 12.81d | 0d |  | Developer | 5h |  | Weston |
| 87 | 1.4.2 | **Marketing Plan** |  | 1.75d | 2012-03-01 A | 2012-03-14 |  | 36% | 1.12d | 2012-02-28 | 2012-03-03 | 0.62d | 22.69d |  |  |  | 25h | 9h |  |
| 88 | 1.4.2.1 | Start Marketing | milestone | 0h | 2012-03-01 | 2012-03-01 | 9 |  |  | 2012-02-28 | 2012-02-28 | 0h | 24.19d | 0d |  |  |  |  |  |

| ID | WBS | Task | Type | Duration | Start | Finish | Predecessors | Complete | Remaining | Baseline start | Baseline finish | Baseline duration | Total slack | Free slack | Resources | Work | Actual work | Owner |
| --- | --- | --- | --- | --- | --- | --- | --- | --- | --- | --- | --- | --- | --- | --- | --- | --- | --- | --- |
| 89 | 1.4.2.2 | **UMN Daily** |  | 1.5d | 2012-03-03 A | 2012-03-14 |  | 17% | 1.25d |  |  |  | 22.69d |  |  | 12h | 2h |  |
| 90 | 1.4.2.2.1 | Contact University of Minnesota Daily Publisher |  | 2h | 2012-03-03 A | 2012-03-05 A | 88 | 100% |  | 2012-02-28 | 2012-02-29 | 2h |  |  | Analyst | 2h | 2h | Jared |
| 91 | 1.4.2.2.2 | Create and publish an article |  | 10h | 2012-03-05 | 2012-03-14 | 90 |  |  |  |  |  | 22.69d |  |  | 10h |  | Jared |
| 92 | 1.4.2.3 | **Flyers** |  | 10h | 2012-03-01 A | 2012-03-09 |  | 40% | 6h | 2012-02-28 | 2012-03-03 | 5h |  |  |  | 10h | 4h |  |
| 93 | 1.4.2.3.1 | Design Flyers |  | 4h | 2012-03-01 A | 2012-03-05 A | 88 | 100% |  |  |  |  |  |  | Analyst | 4h | 4h | Sriram |
| 94 | 1.4.2.3.2 | Print Flyers |  | 2h | 2012-03-05 | 2012-03-07 | 93 |  |  |  |  |  | 0d |  | Analyst | 2h |  | Sriram |
| 95 | 1.4.2.3.3 | Distribute Flyers |  | 4h | 2012-03-07 | 2012-03-09 | 94 |  |  |  |  |  | 0d |  | Analyst | 4h |  | Sriram |
| 96 | 1.4.2.4 | Set up and maintain facebook page |  | 3h | 2012-03-07 A | 2012-03-08 A | 88 | 100% |  | 2012-02-28 | 2012-02-29 | 2h |  |  | Analyst | 3h | 3h | Andrey |
| 97 | 1.4.2.5 | Set up advertisement in Minneapolis skyway Papers | milestone | 0h | 2012-03-02 | 2012-03-02 | 88 |  |  | 2012-02-28 | 2012-03-03 | 5h | 24.31d | 1.12d | Analyst |  |  | Andrey |
| 98 | 1.4.2.6 | End Marketing | milestone | 0h | 2012-03-09 | 2012-03-09 | 90, 96, 97, 95 |  |  | 2012-03-03 | 2012-03-03 | 0h | 23.19d |  |  |  |  |  |
| 99 | 2 | **Post Deployment Options** |  | 13.62d | 2012-05-14 A | 2012-07-20 |  | 6% | 12.86d | 2012-04-16 | 2012-05-14 | 5d |  |  |  | 94h | 10h |  |
| 100 | 2.1 | **Project Management** |  | 5d | 2012-05-14 | 2012-06-08 |  |  |  |  |  |  | 7.38d |  |  |  |  |  |
| 101 | 2.1.1 | Start Optional Features | milestone | 0h | 2012-05-14 | 2012-05-14 | 78 |  |  | 2012-04-16 | 2012-04-16 | 0h | 7.38d | 0d |  |  |  |  |
| 102 | 2.1.2 | End Optional Features | milestone | 0h | 2012-06-08 | 2012-06-08 | 104, 113, 115, 105 |  |  | 2012-05-14 | 2012-05-14 | 0h | 7.38d |  |  |  |  |  |
| 103 | 2.2 | **Framework** |  | 1.62d? | 2012-05-14 A | 2012-05-22 |  | 11% | 1.44d? | 2012-04-16 | 2012-04-24 | 1.62d | 10.75d |  |  | 49h | 10h |  |
| 104 | 2.2.1 | Display List of Businesses |  | 13h | 2012-05-14 | 2012-05-22 | 101 |  |  | 2012-04-16 | 2012-04-24 | 13h | 10.75d | 3.38d | Developer | 13h |  | Jon |
| 105 | 2.2.2 | Set Up MonkeyRunner |  | 5h | 2012-05-14 | 2012-05-16 | 101 |  |  | 2012-02-28 | 2012-03-03 | 5h | 11.75d | 4.38d | Developer | 5h |  | Usha |
| 106 | 2.2.3 | Configure EMMA code converage |  | 8h? | 2012-05-14 | 2012-05-17 | 101 |  |  |  |  |  | 11.38d |  | Developer | 8h |  | Ian |
| 107 | 2.2.4 | Setup mocking framework in Eclipse |  | 5h | 2012-05-14 A | 2012-05-16 A | 101 | 100% |  |  |  |  |  |  | Developer | 10h | 10h | Ian |
| 108 | 2.2.5 | **Automated build** |  | 1.25d | 2012-05-14 | 2012-05-18 |  |  |  | 2012-02-28 | 2012-03-02 | 0.44d | 11.12d |  |  | 13h |  |  |
| 109 | 2.2.5.1 | Ant Script |  | 2h | 2012-05-14 | 2012-05-14 | 101 |  |  | 2012-02-28 | 2012-02-29 | 2h | 11.12d | 0d | Developer | 2h |  | Ian |
| 110 | 2.2.5.2 | Configure Travis-CI |  | 3h | 2012-05-15 | 2012-05-16 | 101, 40, 109 |  |  | 2012-02-28 | 2012-03-02 | 3h | 11.75d |  | Developer | 3h |  | Weston |
| 111 | 2.2.5.3 | Setup mocking framework on Ant |  | 8h | 2012-05-15 | 2012-05-18 | 109 |  |  |  |  |  | 11.12d |  | Developer | 8h |  | Ian |
| 112 | 2.3 | **Mpls Map** |  | 0.62d | 2012-05-14 | 2012-05-16 |  |  |  | 2012-04-16 | 2012-04-18 | 0.62d | 11.75d |  |  | 5h |  |  |
| 113 | 2.3.1 | Reroute based on Closures |  | 5h | 2012-05-14 | 2012-05-16 | 56, 101 |  |  | 2012-04-16 | 2012-04-18 | 5h | 11.75d | 4.38d | Developer | 5h |  | Sriram |

| ID | WBS | Task | Duration | Start | Finish | Predecessors | Baseline start | Baseline finish | Baseline duration | Total slack | Free slack | Resources | Work | Owner |
| --- | --- | --- | --- | --- | --- | --- | --- | --- | --- | --- | --- | --- | --- | --- |
| 114 | 2.4 | **UMN Twin Cities Map** | 5d | 2012-05-14 | 2012-06-08 |  | 2012-04-16 | 2012-05-14 | 5d | 7.38d |  |  | 40h |  |
| 115 | 2.4.1 | Route using Sidewalks | 40h | 2012-05-14 | 2012-06-08 | 56, 101 | 2012-04-16 | 2012-05-14 | 40h | 7.38d | 0d | Developer | 40h | Usha |
